How a schedule from an exported table changed from version to version. A marks actual dates.

## Version 1 (saved 2026-10-01)

Note of the change: Módulo de exportación, importación y respaldo (0.6.0)

| ID | Task | Start |
| --- | --- | --- |
| 1 | Gestión del proyecto |  |
| 2 | Contratación del equipo profesional a honorarios | 2026-06-01 |
| 3 | Presentación de estado de avance ante la Dirección de Investigación |  |
| 4 | Informe técnico de avance N.º 1 (habilita la cuota 2) |  |
| 5 | Informe técnico de avance N.º 2 (habilita la cuota 3) |  |
| 6 | Rendiciones mensuales al Gobierno Regional | 2026-07-01 |
| 7 | Caracterización de relaves (Producto 1) |  |
| 8 | Campaña de extracción de muestras | 2026-06-15 |
| 9 | Informe de ingeniería de perfil preliminar de relaves y uso circular | 2026-06-01 |
| 10 | Contratación de laboratorios (estrategia tripartita) | 2026-06-02 |
| 11 | Ensayos geoquímicos y ambientales (TCLP, ABA, NAG, ME 4A, humedad y granulometría) | 2026-08-19 |
| 12 | Ensayos mineralógicos por difracción de rayos X |  |
| 13 | Ensayos físicos (densidades, sulfatos y cloruros) |  |
| 14 | Informe de caracterización físico-química y geoquímica |  |
| 15 | Diseño de mezclas y prototipado (Productos 2 y 3) |  |
| 16 | Estado del arte: relaves como material cementicio suplementario | 2026-08-03 |
| 17 | Diseño de cinco o seis alternativas de mezcla |  |
| 18 | Implementación del laboratorio de prefabricados (prensa hidráulica, sala C-106) |  |
| 19 | Pruebas de prototipo inicial |  |
| 20 | Validación técnica en laboratorio |  |
| 21 | Informe N.º 2: mezclas inertes factibles de industrializar |  |
| 22 | Cotización y compra de equipamiento de planta piloto |  |
| 23 | Pilotaje e infraestructura comunitaria (Productos 4 y 5) |  |
| 24 | Reunión con la Secretaría Regional Ministerial y visto bueno de la plaza |  |
| 25 | Pilotaje de prefabricados y evaluación comunitaria |  |
| 26 | Desarrollo de la infraestructura: plaza comunitaria |  |
| 27 | Difusión y capacitación |  |
| 28 | Evento de difusión de inicio del proyecto |  |
| 29 | Curso de capacitación con la Universidad Católica (reología, material cementicio suplementario y prototipado) |  |
| 30 | Resumen para el congreso en Colombia (noviembre de 2026) |  |
| 31 | Artículo para revista indexada (revisión por pares) | 2026-09-01 |
| 32 | Informe final y difusión de resultados (Producto 6) |  |
| 33 | Evento de cierre y difusión de resultados |  |

## Version 2 (saved 2026-10-01)

Note of the change: Merge pull request #6 from girebz/ejemplos/fechas-relaves

Changed:

| ID | Task | Start |
| --- | --- | --- |
| 6 | Rendiciones mensuales al Gobierno Regional | 2026-07-01 → 2026-03-02 (-121d) |
